Schedule from MS Project, 2019-06-15 to 2020-07-15, costs in Rs, A marks actual dates.

## Calendars

- FYP: Mon-Fri off; Sat-Sun 12:00-14:00. Exceptions (off unless hours are given): 2019-07-28 to 2019-09-07 (Summer Breaks), 2020-01-01 to 2020-01-20 (Winter Breaks), 2020-07-15 08:00-12:00, 13:00-17:00.

## Resources

| Resource | Unit | Rate |
| --- | --- | --- |
| Muneeb |  |  |
| Bakar |  |  |
| Sohaib |  |  |
| Arduino Mega 2560 | MCU | 1350 |
| RTC DS3231 |  | 200 |
| LCD ST7920 |  | 1250 |
| ACS712 - 30A |  | 275 |
| ESP8266 |  | 450 |
| Hardware Design |  | 300 |
| Miscillaneous |  | 1000 |
| Wastes |  |  |
| Fixed Material |  | 1200 |
| Potential Trasnformer |  | 250 |
| Transport |  |  |
| Umair |  |  |
| Thesis Print |  | 670 |
| Hardcover |  | 390 |

## Schedule

| ID | WBS | Task | Type | Duration | Start | Finish | Predecessors | Complete | Baseline start | Baseline finish | Baseline duration | Constraint | Deadline | Resources | Work | Actual work | Cost | Actual cost |
| --- | --- | --- | --- | --- | --- | --- | --- | --- | --- | --- | --- | --- | --- | --- | --- | --- | --- | --- |
| 1 | 1 | **Planning** |  | 11.13d | 2019-06-15 A | 2019-11-22 A |  | 100% |  |  |  |  |  |  | 179h | 179h |  |  |
| 2 | 1.1 | **Literature Review and Planning** |  | 8.75d | 2019-06-15 A | 2019-10-27 A |  | 100% |  |  |  |  |  |  | 52h | 52h |  |  |
| 3 | 1.1.1 | Collecting Realted Papers |  | 1.5d | 2019-06-15 A | 2019-06-30 A |  | 100% |  |  |  | finish no later than 2019-06-30 |  | Muneeb [50%]; Umair [50%] | 12h | 12h |  |  |
| 4 | 1.1.2 | Studying Papers |  | 7.25d | 2019-07-06 A | 2019-10-27 A | 3 | 100% |  |  |  | start no earlier than 2019-07-06 |  |  | 40h | 40h |  |  |
| 5 | 1.2 | **Document and Management** |  | 7.75d | 2019-09-08 A | 2019-11-17 A |  | 100% |  |  |  |  |  |  | 112h | 112h |  |  |
| 6 | 1.2.1 | Proposal Submission |  | 1d | 2019-09-08 A | 2019-09-15 A |  | 100% | 2019-09-11 | 2019-09-17 | 0d | start no earlier than 2019-09-08 | 2019-09-17 | Muneeb | 8h | 8h |  |  |
| 7 | 1.2.2 | Proposal Defense Presenatation | milestone | 0d | 2019-09-17 A | 2019-09-17 A |  | 100% |  |  |  | finish no earlier than 2019-09-17 |  |  |  |  |  |  |
| 8 | 1.2.3 | Feasibility Report |  | 1d | 2019-09-15 A | 2019-09-27 A | 6 | 100% |  |  |  | must finish on 2019-09-27 | 2019-09-27 | Umair | 8h | 8h |  |  |
| 9 | 1.2.4 | Project Management Design |  | 6d | 2019-09-27 A | 2019-11-17 A | 8 | 100% |  |  |  | finish no earlier than 2019-10-27 |  | Umair | 48h | 48h |  |  |
| 10 | 1.2.5 | Budget Document |  | 6d | 2019-09-27 A | 2019-11-17 A | 9SS | 100% |  |  |  | finish no earlier than 2019-10-27 |  | Bakar | 48h | 48h |  |  |
| 11 | 1.3 | **Designing the Model** |  | 9.76d | 2019-06-30 A | 2019-11-22 A |  | 100% |  |  |  |  |  |  | 15h | 15h |  |  |
| 12 | 1.3.1 | Mechanical Design |  | 6.63d | 2019-06-30 A | 2019-10-20 A |  | 100% |  |  |  | finish no earlier than 2019-10-20 |  | Sohaib [3.8%] | 2h | 2h |  |  |
| 13 | 1.3.2 | Cicuit Design |  | 6.63d | 2019-06-30 A | 2019-10-20 A | 12SS | 100% |  |  |  | finish no earlier than 2019-10-20 |  | Umair [4.7%]; Muneeb [4.7%] | 5h | 5h |  |  |
| 14 | 1.3.3 | Coding Strategy |  | 2.88d | 2019-10-26 A | 2019-11-22 A | 13 | 100% |  |  |  | start no earlier than 2019-10-26 |  | Umair [21.7%] | 5h | 5h |  |  |
| 15 | 1.3.4 | Mathematical Modeling |  | 2.88d | 2019-10-26 A | 2019-11-22 A | 14SS | 100% |  |  |  | start no earlier than 2019-10-26 |  | Umair [13%] | 3h | 3h |  |  |
| 16 | 2 | **Working** |  | 28.13d | 2019-11-22 A | 2020-03-27 A | 1 | 100% |  |  |  |  |  |  | 361.04h | 361.04h | 9,475 | 5,975 |
| 17 | 2.1 | Buying Hardware |  | 1.88d | 2019-11-22 A | 2019-12-08 A |  | 100% |  |  |  | finish no earlier than 2019-11-17 |  | ACS712 - 30A; Arduino Mega 2560 [1 MCU]; ESP8266; Fixed Material; LCD ST7920; Miscillaneous; Potential Trasnformer; RTC DS3231; Transport [0.3%]; Wastes [2%]; Muneeb [42.2%]; Umair [42.2%] | 11h | 11h | 9,475 | 5,975 |
| 18 | 2.2 | **Programming and Debuging** |  | 3.13d | 2019-11-22 A | 2019-12-21 A |  | 100% |  |  |  |  |  | Umair | 25.04h | 25.04h |  |  |
| 19 | 2.2.1 | Script |  | 1.75d | 2019-11-22 A | 2019-12-07 A |  | 100% |  |  |  |  |  |  |  |  |  |  |
| 20 | 2.2.2 | Temporary Emboidment |  | 1.12d | 2019-12-07 A | 2019-12-20 A | 19 | 100% |  |  |  |  |  |  |  |  |  |  |
| 21 | 2.2.3 | General Algos Required |  | 3.12d | 2019-11-22 A | 2019-12-21 A |  | 100% |  |  |  | finish no earlier than 2019-11-24 |  |  |  |  |  |  |
| 22 | 2.2.4 | Main |  | 3.13d | 2019-11-22 A | 2019-12-21 A |  | 100% |  |  |  | finish no earlier than 2019-11-24 |  |  |  |  |  |  |
| 23 | 2.3 | **ThingSpeak** |  | 0.62d | 2019-11-22 A | 2019-11-29 A |  | 100% |  |  |  |  |  | Umair | 5h | 5h |  |  |
| 24 | 2.3.1 | Channel Creation |  | 2h | 2019-11-22 A | 2019-11-23 A |  | 100% |  |  |  |  |  |  |  |  |  |  |
| 25 | 2.3.2 | Designing Read Write Structure on MATLAB |  | 5h | 2019-11-22 A | 2019-11-29 A |  | 100% |  |  |  |  |  |  |  |  |  |  |

| ID | WBS | Task | Type | Duration | Start | Finish | Predecessors | Complete | Constraint | Resources | Work | Actual work | Cost | Actual cost |
| --- | --- | --- | --- | --- | --- | --- | --- | --- | --- | --- | --- | --- | --- | --- |
| 26 | 2.4 | **App Design** |  | 25d | 2019-12-21 A | 2020-03-27 A | 18 | 100% |  | Umair | 200h | 200h |  |  |
| 27 | 2.4.1 | MATLAB App Designer |  | 5w | 2019-12-21 A | 2020-03-27 A |  | 100% |  |  |  |  |  |  |
| 28 | 2.4.2 | Android |  | 2h | 2019-12-21 A | 2019-12-22 A |  | 100% |  |  |  |  |  |  |
| 29 | 2.5 | **Simulations and Drawings** |  | 15d | 2019-12-21 A | 2020-02-28 A | 26SS | 100% |  | Umair | 120h | 120h |  |  |
| 30 | 2.5.1 | Proteus Model |  | 2.5w | 2019-12-21 A | 2020-02-21 A |  | 100% |  |  |  |  |  |  |
| 31 | 2.5.2 | Drawings |  | 0.5w | 2020-02-21 A | 2020-02-28 A | 30 | 100% |  |  |  |  |  |  |
| 32 | 3 | **Finalizaing** |  | 22.74d | 2020-03-27 A | 2020-07-15 A | 16 | 100% |  |  | 45.76h | 45.76h | 1,360 | 1,360 |
| 33 | 3.1 | Assembling + Prototype Structure |  | 1d | 2020-03-27 A | 2020-03-29 A | 26 | 100% |  | Hardware Design; Muneeb | 8h | 8h | 300 | 300 |
| 34 | 3.2 | Thesis Writing |  | 3.47d | 2020-03-27 A | 2020-04-25 A | 33 | 100% |  | Thesis Print; Hardcover; Umair; Sohaib; Muneeb | 37.76h | 37.76h | 1,060 | 1,060 |
| 35 | 3.3 | Thesis Submission | milestone | 0d | 2020-07-15 A | 2020-07-15 A |  | 100% | start no earlier than 2020-07-15 |  |  |  |  |  |
